Schedule from MS Project, 2010-05-20 to 2010-11-19, A marks actual dates.

## Calendars

- Standard: Mon-Fri 08:00-12:00, 13:00-17:00; Sat-Sun off. Exceptions (off unless hours are given): 2010-05-31, 2010-07-05, 2010-09-06, 2010-10-11.

## Resources

| Resource |
| --- |
| Bediako |
| Satish |
| Prasad |
| All |
| Vijay |
| John |
| Greg |
| Dan |
| Santhosh |
| Sree |
| Santosh |
| external |

## Schedule

| ID | WBS | Task | Type | Duration | Start | Finish | Predecessors | Complete | Remaining | Total slack | Constraint | Resources | Work | Actual work | Text1 |
| --- | --- | --- | --- | --- | --- | --- | --- | --- | --- | --- | --- | --- | --- | --- | --- |
| 2 | 1 | **Project management and set-up tasks** |  | 128d | 2010-05-20 A | 2010-11-19 |  | 89% | 13.96d | 0d |  |  | 402h | 354h |  |
| 3 | 1.1 | **Inception** |  | 21d | 2010-05-20 A | 2010-06-18 A |  | 100% |  |  |  |  | 158h | 158h |  |
| 4 | 1.1.1 | Project awarded | milestone | 0d | 2010-05-20 A | 2010-05-20 A |  | 100% |  |  | start no earlier than 2010-05-20 |  |  |  |  |
| 5 | 1.1.2 | Kickoff meeting |  | 1d | 2010-05-28 A | 2010-05-28 A |  | 100% |  |  | start no earlier than 2010-05-28 |  |  |  |  |
| 6 | 1.1.3 | Draft Project Management Plan |  | 10d | 2010-06-07 A | 2010-06-18 A |  | 100% |  |  | start no earlier than 2010-06-07 | Greg | 80h | 80h |  |
| 7 | 1.1.4 | **New member ramp-up & SDK training** |  | 6d | 2010-06-07 A | 2010-06-14 A |  | 100% |  |  |  |  | 78h | 78h |  |
| 8 | 1.1.4.1 | Self study |  | 5d | 2010-06-07 A | 2010-06-11 A |  | 100% |  |  | start no earlier than 2010-06-07 | Bediako; John [75%] | 70h | 70h |  |
| 9 | 1.1.4.2 | SDK training class |  | 1d | 2010-06-14 A | 2010-06-14 A |  | 100% |  |  | start no earlier than 2010-06-14 | All | 8h | 8h |  |
| 10 | 1.2 | **Elaboration** |  | 17d | 2010-06-21 A | 2010-07-14 A |  | 100% |  |  |  |  | 156h | 156h |  |
| 11 | 1.2.1 | Review and deliver Project Management Plan |  | 5d | 2010-06-21 A | 2010-06-25 A |  | 100% |  |  | start no earlier than 2010-06-21 | Greg | 40h | 40h |  |
| 12 | 1.2.2 | Scope document (charter) |  | 12d | 2010-06-21 A | 2010-07-07 A |  | 100% |  |  | start no earlier than 2010-06-21 | Greg [50%]; Satish [50%] | 96h | 96h |  |
| 13 | 1.2.3 | Design Review Package - note: will not be 10 days before C1 |  | 10d | 2010-06-30 A | 2010-07-14 A | 12FF, 60FF, 106FF | 100% |  |  |  | All [25%] | 20h | 20h |  |
| 14 | 1.3 | **Transition** |  | 5d | 2010-11-09 | 2010-11-15 |  |  |  | 4d | start no earlier than 2010-09-27 |  | 40h |  |  |
| 15 | 1.3.1 | Project Summary Report |  | 5d | 2010-11-09 | 2010-11-15 | 94FF+1d, 196FF+1d |  |  | 4d | start no earlier than 2010-10-13 | Greg | 40h |  |  |
| 16 | 1.4 | **Monthly status reports** |  | 107d | 2010-06-10 A | 2010-11-10 |  | 83% | 17.83d | 7d |  |  | 48h | 40h |  |
| 17 | 1.4.1 | Monthly status report 1 |  | 1d | 2010-06-10 A | 2010-06-10 A |  | 100% |  |  | start no earlier than 2010-06-10 | Satish | 8h | 8h |  |
| 18 | 1.4.2 | Monthly status report 2 |  | 1d | 2010-07-12 A | 2010-07-12 A |  | 100% |  |  | start no earlier than 2010-07-10 | Greg | 8h | 8h |  |
| 19 | 1.4.3 | Monthly status report 3 |  | 1d | 2010-08-10 A | 2010-08-10 A |  | 100% |  |  | start no earlier than 2010-08-10 | Greg | 8h | 8h |  |
| 20 | 1.4.4 | Monthly status report 4 |  | 1d | 2010-09-10 A | 2010-09-10 A |  | 100% |  |  | start no earlier than 2010-09-10 | Greg | 8h | 8h |  |
| 21 | 1.4.5 | Monthly status report 5 |  | 1d | 2010-10-12 A | 2010-10-12 A |  | 100% |  |  | start no earlier than 2010-10-10 | Greg | 8h | 8h |  |
| 22 | 1.4.6 | Monthly status report 6 |  | 1d | 2010-11-10 | 2010-11-10 |  |  |  | 7d | start no earlier than 2010-11-10 | Greg | 8h |  |  |
| 23 | 1.5 | Project Completion | milestone | 0d | 2010-11-19 | 2010-11-19 |  |  |  | 0d | must finish on 2010-11-19 |  |  |  |  |
| 25 | 2 | **SDK 4.3 release** |  | 19d | 2010-05-28 A | 2010-06-24 A |  | 100% |  |  |  |  | 408h | 408h | 1,2,10 |
| 26 | 2.1 | QA support |  | 6d | 2010-05-28 A | 2010-06-07 A |  | 100% |  |  | start no earlier than 2010-05-28 | Santhosh | 48h | 48h |  |
| 27 | 2.2 | Unit testing |  | 6d | 2010-06-02 A | 2010-06-09 A |  | 100% |  |  | start no earlier than 2010-06-02 | John [75%]; Vijay [50%] | 60h | 60h |  |

| ID | WBS | Task | Type | Duration | Start | Finish | Predecessors | Complete | Remaining | Total slack | Constraint | Resources | Work | Actual work |
| --- | --- | --- | --- | --- | --- | --- | --- | --- | --- | --- | --- | --- | --- | --- |
| 28 | 2.3 | **Update guides** |  | 5d | 2010-06-01 A | 2010-06-07 A |  | 100% |  |  |  |  | 40h | 40h |
| 29 | 2.3.1 | Workbench Users Guide |  | 1d | 2010-06-01 A | 2010-06-01 A |  | 100% |  |  | start no earlier than 2010-06-01 | Dan | 8h | 8h |
| 30 | 2.3.2 | SDK Programmers Guide |  | 1d | 2010-06-02 A | 2010-06-02 A | 29 | 100% |  |  |  | Dan | 8h | 8h |
| 31 | 2.3.3 | UML Modeling Guide |  | 1d | 2010-06-03 A | 2010-06-03 A | 30 | 100% |  |  |  | Dan | 8h | 8h |
| 32 | 2.3.4 | Object Relational Mapping Guide |  | 1d | 2010-06-04 A | 2010-06-04 A | 31 | 100% |  |  |  | Dan | 8h | 8h |
| 33 | 2.3.5 | How To Use SDK Guide |  | 1d | 2010-06-07 A | 2010-06-07 A | 32 | 100% |  |  |  | Dan | 8h | 8h |
| 34 | 2.4 | **Update documentation** |  | 10d | 2010-06-07 A | 2010-06-18 A |  | 100% |  |  |  |  | 120h | 120h |
| 35 | 2.4.1 | ISO Common Architectural Overview |  | 2d | 2010-06-07 A | 2010-06-08 A |  | 100% |  |  | start no earlier than 2010-06-07 | Prasad; Dan [50%] | 24h | 24h |
| 36 | 2.4.2 | SDK release notes |  | 2d | 2010-06-09 A | 2010-06-10 A | 35 | 100% |  |  |  | Prasad; Dan [50%] | 24h | 24h |
| 37 | 2.4.3 | Workbench release notes |  | 2d | 2010-06-11 A | 2010-06-14 A | 36 | 100% |  |  |  | Prasad; Dan [50%] | 24h | 24h |
| 38 | 2.4.4 | ISO Common release notes |  | 1d | 2010-06-15 A | 2010-06-15 A | 37 | 100% |  |  |  | Prasad; Dan [50%] | 12h | 12h |
| 39 | 2.4.5 | SDK:Example/ISOExample readme |  | 1d | 2010-06-16 A | 2010-06-16 A | 38 | 100% |  |  |  | Prasad; Dan [50%] | 12h | 12h |
| 40 | 2.4.6 | Workbench readme |  | 1d | 2010-06-17 A | 2010-06-17 A | 39 | 100% |  |  |  | Prasad; Dan [50%] | 12h | 12h |
| 41 | 2.4.7 | ISO Common readme |  | 1d | 2010-06-18 A | 2010-06-18 A | 40 | 100% |  |  |  | Prasad; Dan [50%] | 12h | 12h |
| 42 | 2.5 | Release preparation (gforge, download center, etc.) |  | 9d | 2010-06-08 A | 2010-06-18 A |  | 100% |  |  | start no earlier than 2010-06-07 | Dan [50%] | 36h | 36h |
| 43 | 2.6 | Workbench deployment, release packaging, readme |  | 3d | 2010-06-11 A | 2010-06-15 A |  | 100% |  |  | start no earlier than 2010-06-11 | Santhosh | 24h | 24h |
| 44 | 2.7 | User acceptance testing |  | 5d | 2010-06-14 A | 2010-06-18 A |  | 100% |  |  | start no earlier than 2010-06-14 | Satish; Sree | 80h | 80h |
| 45 | 2.8 | Release ready | milestone | 0d | 2010-06-21 A | 2010-06-21 A |  | 100% |  |  | start no earlier than 2010-06-21 |  |  |  |
| 46 | 2.9 | Release announcement | milestone | 0d | 2010-06-22 A | 2010-06-22 A |  | 100% |  |  | start no earlier than 2010-06-22 |  |  |  |
| 47 | 2.10 | Software Code Base (4.3) |  | 1d | 2010-06-24 A | 2010-06-24 A | 45FS+3d | 100% |  |  | start no earlier than 2010-06-15 |  |  |  |
| 48 | 2.11 | Deployment Package (4.3) |  | 1d | 2010-06-24 A | 2010-06-24 A | 45FS+3d | 100% |  |  | start no earlier than 2010-06-15 |  |  |  |
| 50 | 3 | **ISO 21090 Java library** |  | 103d | 2010-06-21 A | 2010-11-15 |  | 89% | 10.88d | 4d |  |  | 342h | 330h |
| 51 | 3.1 | **Elaboration** |  | 10d | 2010-06-21 A | 2010-07-02 A |  | 100% |  |  | start no earlier than 2010-06-21 |  | 80h | 80h |
| 52 | 3.1.1 | **E1 - Sprint 1** |  | 10d | 2010-06-21 A | 2010-07-02 A |  | 100% |  |  |  |  | 80h | 80h |
| 53 | 3.1.1.1 | **Requirements and Design Specifications** |  | 10d | 2010-06-21 A | 2010-07-02 A |  | 100% |  |  |  |  | 80h | 80h |
| 54 | 3.1.1.1.1 | GAP_Analysis_Iso21090.doc |  | 4d | 2010-06-21 A | 2010-06-24 A |  | 100% |  |  |  | Vijay | 32h | 32h |
| 55 | 3.1.1.1.2 | Design analysis |  | 6d | 2010-06-25 A | 2010-07-02 A | 54 | 100% |  |  |  | Vijay | 48h | 48h |

| ID | WBS | Task | Type | Duration | Start | Finish | Predecessors | Complete | Remaining | Total slack | Constraint | Resources | Work | Actual work |
| --- | --- | --- | --- | --- | --- | --- | --- | --- | --- | --- | --- | --- | --- | --- |
| 56 | 3.2 | **Construction** |  | 58d | 2010-07-06 A | 2010-09-24 |  | 99% | 0d | 39d |  |  | 222h | 222h |
| 57 | 3.2.1 | **C1- Sprint 2** |  | 19d | 2010-07-06 A | 2010-07-30 |  | 99% | 0d | 78d | start no earlier than 2010-07-06 |  | 120h | 120h |
| 58 | 3.2.1.1 | Finalized requirements from PODS/COPPA | milestone | 0d | 2010-07-06 | 2010-07-06 | 55 |  |  | 90d |  |  |  |  |
| 59 | 3.2.1.2 | **Requirements and Design Specification (cont.)** |  | 7d | 2010-07-06 A | 2010-07-14 A | 58 | 100% |  |  |  |  | 56h | 56h |
| 60 | 3.2.1.2.1 | ISO 21090 Common Library version 2.2 Design.doc |  | 7d | 2010-07-06 A | 2010-07-14 A |  | 100% |  |  | start no earlier than 2010-07-06 | Vijay | 56h | 56h |
| 61 | 3.2.1.3 | [Add data types for PODS/COPPA if required] | milestone | 0d | 2010-07-06 A | 2010-07-06 A | 58 | 100% |  |  | start no earlier than 2010-06-28 |  |  |  |
| 62 | 3.2.1.4 | Java API expansion implementation -rnd 1 |  | 3d | 2010-07-15 A | 2010-07-19 A | 61, 60 | 100% |  |  |  | Vijay | 24h | 24h |
| 63 | 3.2.1.5 | JAXB transformers - rnd 1 |  | 2d | 2010-07-21 A | 2010-07-22 A | 62 | 100% |  |  | start no earlier than 2010-07-21 | Vijay | 16h | 16h |
| 64 | 3.2.1.6 | Java API expansion implementation - rnd 2 |  | 2d | 2010-07-23 A | 2010-07-26 A | 63 | 100% |  |  | start no earlier than 2010-07-22 |  |  |  |
| 65 | 3.2.1.7 | JAXB transformers - rnd 2 |  | 2d | 2010-07-27 A | 2010-07-28 A | 64 | 100% |  |  | start no earlier than 2010-07-22 |  |  |  |
| 66 | 3.2.1.8 | Sprint C1 Integration |  | 2d | 2010-07-29 A | 2010-07-30 A | 65 | 100% |  |  |  | Vijay [50%]; Santosh [50%]; Dan [50%] | 24h | 24h |
| 67 | 3.2.2 | **C2 - Sprint 3** |  | 19d | 2010-08-02 A | 2010-08-27 |  | 99% | 0d | 59d | start no earlier than 2010-08-02 |  | 48h | 48h |
| 68 | 3.2.2.1 | Junit test cases |  | 1d | 2010-08-02 A | 2010-08-02 A |  | 100% |  |  |  | Vijay | 8h | 8h |
| 69 | 3.2.2.2 | 2.1.1 patch library |  | 4d | 2010-08-03 A | 2010-08-06 A |  | 100% |  |  | start no earlier than 2010-08-03 | Vijay | 32h | 32h |
| 70 | 3.2.2.3 | Final listing of actual data type support in v 2.2 |  | 1d | 2010-08-23 A | 2010-08-23 A |  | 100% |  |  | start no earlier than 2010-08-23 | Dan | 8h | 8h |
| 71 | 3.2.2.4 | Finalized design documents to QA | milestone | 0d | 2010-08-23 A | 2010-08-23 A | 70 | 100% |  |  | start no earlier than 2010-08-09 | Dan |  |  |
| 72 | 3.2.2.5 | (Test Plan Due - embedded in SDK) | milestone | 0d | 2010-08-13 | 2010-08-13 |  |  |  | 69d | start no earlier than 2010-08-13 |  |  |  |
| 73 | 3.2.2.6 | (Sprint C2 Integration -embedded in SDK) | milestone | 0d | 2010-08-27 | 2010-08-27 |  |  |  | 59d | start no earlier than 2010-08-27 |  |  |  |
| 74 | 3.2.3 | **C3 - Sprint 4 (QA)** |  | 19d | 2010-08-30 A | 2010-09-24 A |  | 100% |  |  | start no earlier than 2010-08-30 |  | 54h | 54h |
| 75 | 3.2.3.1 | Code base available for QA | milestone | 0d | 2010-08-30 A | 2010-08-30 A |  | 100% |  |  |  |  |  |  |
| 76 | 3.2.3.2 | QA Support |  | 19d | 2010-08-30 A | 2010-09-24 A |  | 100% |  |  |  | All [25%] | 38h | 38h |
| 77 | 3.2.3.3 | PIM_21090.pdf - partial |  | 1d | 2010-09-21 A | 2010-09-21 A |  | 100% |  |  | start no earlier than 2010-09-21 | Vijay | 8h | 8h |
| 78 | 3.2.3.4 | **Update documentation** |  | 11.5d | 2010-09-08 A | 2010-09-23 A |  | 100% |  |  |  |  | 8h | 8h |
| 79 | 3.2.3.4.1 | ISO Common Architectural Overview (no changes) | milestone | 0d | 2010-09-08 A | 2010-09-08 A |  | 100% |  |  | start no earlier than 2010-09-08 |  |  |  |
| 80 | 3.2.3.4.2 | ISO Common release notes |  | 0.5d | 2010-09-23 A | 2010-09-23 A |  | 100% |  |  | start no earlier than 2010-09-23 | Vijay | 4h | 4h |
| 81 | 3.2.3.4.3 | ISO Common readme |  | 0.5d | 2010-09-23 A | 2010-09-23 A |  | 100% |  |  | start no earlier than 2010-09-23 | Vijay | 4h | 4h |
| 82 | 3.2.3.5 | Final product documentation to QA | milestone | 0d | 2010-09-20 A | 2010-09-20 A |  | 100% |  |  | start no earlier than 2010-09-20 |  |  |  |

| ID | WBS | Task | Type | Duration | Start | Finish | Predecessors | Complete | Remaining | Total slack | Free slack | Constraint | Resources | Work | Actual work | Text1 |
| --- | --- | --- | --- | --- | --- | --- | --- | --- | --- | --- | --- | --- | --- | --- | --- | --- |
| 83 | 3.3 | **Transition** |  | 35d | 2010-09-27 A | 2010-11-15 |  | 53% | 16.41d | 4d |  |  |  | 40h | 28h |  |
| 84 | 3.3.1 | QA Support (QA delayed) - included with SDK 4.4 |  | 5d | 2010-09-27 A | 2010-10-01 A |  | 100% |  |  |  | start no earlier than 2010-09-27 |  |  |  |  |
| 85 | 3.3.2 | QA Complete | milestone | 0d | 2010-11-09 | 2010-11-09 | 84, 191FF |  |  | 4d | 0d | start no earlier than 2010-09-24 |  |  |  |  |
| 86 | 3.3.3 | **Documentation (delayed due to BRD)** |  | 17.5d | 2010-10-15 A | 2010-11-09 | 78 | 25% | 13.12d | 5.5d | 1.5d |  |  | 16h | 4h |  |
| 87 | 3.3.3.1 | Limitations and known issues |  | 0.5d | 2010-10-15 A | 2010-10-15 A |  | 100% |  |  |  | start no earlier than 2010-10-15 | Vijay | 4h | 4h |  |
| 88 | 3.3.3.2 | Variations between ISO 21090 XSD and UML/pdf |  | 1.5d | 2010-11-08 | 2010-11-09 |  |  |  | 5.5d |  | start no earlier than 2010-11-08 | Dan | 12h |  |  |
| 89 | 3.3.4 | **Archive unused versions** |  | 9d | 2010-10-15 A | 2010-10-27 A |  | 100% |  |  |  |  |  | 24h | 24h |  |
| 90 | 3.3.4.1 | 2.1.1 branch - "on spec" for CIS, tested in sprint 3 but not released |  | 1d | 2010-10-26 A | 2010-10-26 A |  | 100% |  |  |  | start no earlier than 2010-10-26 | Vijay | 8h | 8h |  |
| 91 | 3.3.4.2 | PIM_21090.pdf (updated for and checked into 2.1.1) |  | 1d | 2010-10-15 A | 2010-10-15 A | 77 | 100% |  |  |  | start no earlier than 2010-10-15 | Vijay | 8h | 8h |  |
| 92 | 3.3.4.3 | 2.2 branch - full ISO support, incomplete, untested |  | 1d | 2010-10-27 A | 2010-10-27 A |  | 100% |  |  |  | start no earlier than 2010-10-27 | Vijay | 8h | 8h |  |
| 93 | 3.3.5 | Check CI Server (exceptions previously fixed) - deferred | milestone | 0d | 2010-10-15 A | 2010-10-15 A |  | 100% |  |  |  | start no earlier than 2010-10-15 | Vijay |  |  |  |
| 94 | 3.3.6 | Deliverables Acceptance - documentation, code |  | 3d | 2010-11-10 | 2010-11-12 | 85, 86FF+2d |  |  | 4d | 0d | start no earlier than 2010-09-29 |  |  |  |  |
| 95 | 3.3.7 | (Test Package - included with SDK 4.4) |  | 1d | 2010-11-10 | 2010-11-10 | 85 |  |  | 7d |  |  |  |  |  |  |
| 96 | 3.3.8 | Software Code Base (2.1.0.1 & 2.1.1) |  | 1d | 2010-11-15 | 2010-11-15 | 94 |  |  | 4d |  |  |  |  |  |  |
| 97 | 3.3.9 | Deployment Package (2.1.0.1) |  | 1d | 2010-11-15 | 2010-11-15 | 94 |  |  | 4d |  |  |  |  |  |  |
| 99 | 4 | **SDK 4.4 release (using 2.1 library, integrated with caGrid 1.4)** |  | 104d | 2010-06-21 A | 2010-11-16 |  | 90% | 10.77d | 3d |  |  |  | 1245.33h | 1181.33h |  |
| 100 | 4.1 | **Elaboration** |  | 10d | 2010-06-21 A | 2010-07-02 A |  | 100% |  |  |  |  |  | 120h | 120h |  |
| 101 | 4.1.1 | **E1 - Sprint 1** |  | 10d | 2010-06-21 A | 2010-07-02 A |  | 100% |  |  |  |  |  | 120h | 120h |  |
| 102 | 4.1.1.1 | Functional Analysis |  | 5d | 2010-06-21 A | 2010-06-25 A |  | 100% |  |  |  | start no earlier than 2010-06-21 | Dan | 40h | 40h | 1-6,8 |
| 103 | 4.1.1.2 | Requirements and Design Specifications |  | 5d | 2010-06-28 A | 2010-07-02 A | 102 | 100% |  |  |  | start no earlier than 2010-06-15 | Dan; Santhosh | 80h | 80h | 1-6,8 |
| 104 | 4.2 | **Construction** |  | 58d | 2010-07-06 A | 2010-09-24 A |  | 100% |  |  |  |  |  | 797.33h | 797.33h |  |
| 105 | 4.2.1 | **C1- Sprint 2** |  | 19d | 2010-07-06 A | 2010-07-30 A |  | 100% |  |  |  | start no earlier than 2010-07-06 |  | 285.33h | 285.33h |  |
| 106 | 4.2.1.1 | **Requirements and Design specifications (cont)** |  | 4d | 2010-07-06 A | 2010-07-09 A |  | 100% |  |  |  |  |  | 72h | 72h |  |
| 107 | 4.2.1.1.1 | SDK_4.4_ISO_Data_Type_Support_within_Web_UI_Design_Document.docx |  | 2d | 2010-07-06 A | 2010-07-07 A | 103 | 100% |  |  |  |  | Dan | 16h | 16h | 5,6,8 |
| 108 | 4.2.1.1.2 | SDK 4.4_ISO_Data_Type_Support.EAP |  | 2d | 2010-07-08 A | 2010-07-09 A | 107 | 100% |  |  |  |  | Dan | 16h | 16h | 1,2 |
| 109 | 4.2.1.1.3 | RESTfulAPI_Design.docx |  | 4d | 2010-07-06 A | 2010-07-09 A | 103 | 100% |  |  |  |  | Santhosh | 32h | 32h |  |
| 110 | 4.2.1.1.4 | Using JAXB with ISO 21090 data types.doc |  | 1d | 2010-07-08 A | 2010-07-08 A |  | 100% |  |  |  | start no earlier than 2010-07-08 | Prasad | 8h | 8h |  |
| 111 | 4.2.1.2 | caGrid code freeze | milestone | 0d | 2010-07-06 A | 2010-07-06 A |  | 100% |  |  |  | start no earlier than 2010-07-06 |  |  |  |  |
| 112 | 4.2.1.3 | Meet with SI regarding metadata repository integration | milestone | 0d | 2010-07-06 A | 2010-07-06 A |  | 100% |  |  |  | start no earlier than 2010-06-28 | Greg; Satish |  |  | 11,12 |
| 113 | 4.2.1.4 | Conversion of RESTful query to ISO object |  | 4d | 2010-07-12 A | 2010-07-15 A | 109 | 100% |  |  |  |  | Santhosh | 32h | 32h | 2,8 |
| 114 | 4.2.1.5 | Meet with caGrid to discuss integration | milestone | 0d | 2010-07-15 A | 2010-07-15 A | 113 | 100% |  |  |  | start no earlier than 2010-07-15 | Greg; Satish |  |  |  |
| 115 | 4.2.1.6 | Query Translator ISO object to HQL Query |  | 4d | 2010-07-16 A | 2010-07-21 A | 114 | 100% |  |  |  |  | Santhosh | 32h | 32h | 2,3 |
| 116 | 4.2.1.7 | JUnit test cases (query/object conversions) |  | 2d | 2010-07-22 A | 2010-07-23 A | 113, 115 | 100% |  |  |  | start no earlier than 2010-07-21 | Santhosh | 16h | 16h | 2,3 |
| 117 | 4.2.1.8 | Class Cache Map for Searchable fields for GUI |  | 3d | 2010-07-26 A | 2010-07-28 A | 116 | 100% |  |  |  |  | Santhosh [22.2%] | 5.33h | 5.33h |  |
| 118 | 4.2.1.9 | Modify / unit test Workbench changes to remove API enabling restrictions |  | 1d | 2010-07-12 A | 2010-07-12 A | 106 | 100% |  |  |  |  | Dan | 8h | 8h | 4,5 |
| 119 | 4.2.1.10 | Modify / unit test build scripts to remove API enabling restrictions |  | 1d | 2010-07-13 A | 2010-07-13 A | 118 | 100% |  |  |  |  | Dan | 8h | 8h | 4,5 |
| 120 | 4.2.1.11 | Support Search Criteria input from HTML for all supported ISO data types |  | 8d | 2010-07-14 A | 2010-07-23 A | 119 | 100% |  |  |  |  | Dan | 64h | 64h | 4,5 |
| 121 | 4.2.1.12 | Integrate metadata to only selectively generate ISO data type input fields that are actually mapped to the database |  | 3d | 2010-07-26 A | 2010-07-28 A | 120, 117SS | 100% |  |  |  |  | Dan | 24h | 24h |  |
| 122 | 4.2.1.13 | Sprint C1 Integration |  | 2d | 2010-07-29 A | 2010-07-30 A | 116, 121 | 100% |  |  |  | start no earlier than 2010-06-15 | Vijay [50%]; Santhosh [50%]; Dan [50%] | 24h | 24h |  |

| ID | WBS | Task | Type | Duration | Start | Finish | Predecessors | Complete | Constraint | Resources | Work | Actual work | Text1 |
| --- | --- | --- | --- | --- | --- | --- | --- | --- | --- | --- | --- | --- | --- |
| 123 | 4.2.2 | **C2 - Sprint 3** |  | 20d | 2010-08-02 A | 2010-08-27 A |  | 100% | start no earlier than 2010-08-02 |  | 248h | 248h |  |
| 124 | 4.2.2.1 | XSLT for GETHTML (with unit tests) |  | 5d | 2010-08-02 A | 2010-08-06 A |  | 100% | start no earlier than 2010-08-02 | Santhosh | 40h | 40h | 2,3 |
| 125 | 4.2.2.2 | XSLT for GETJSON (with unit tests) |  | 5d | 2010-08-09 A | 2010-08-13 A |  | 100% | start no earlier than 2010-08-09 | Santhosh | 40h | 40h | 2,3 |
| 126 | 4.2.2.3 | JSON HTML script changes for ISO data types |  | 2d | 2010-08-16 A | 2010-08-17 A |  | 100% | start no earlier than 2010-08-16 | Santhosh | 16h | 16h | 2,3 |
| 127 | 4.2.2.4 | Integrate submitted ISO data type criteria with existing search functionality |  | 2d | 2010-08-02 A | 2010-08-03 A | 121 | 100% | start no earlier than 2010-07-21 | Dan | 16h | 16h | 2,3,4,5 |
| 128 | 4.2.2.5 | Implement and unit test client-side form validation |  | 3d | 2010-08-04 A | 2010-08-06 A |  | 100% | start no earlier than 2010-08-04 | Dan | 24h | 24h | 2,3 |
| 129 | 4.2.2.6 | Integration of v2.2 library (and bkwd comp w/ 2.1.1) |  | 5d | 2010-08-09 A | 2010-08-13 A |  | 100% | start no earlier than 2010-08-09 | Dan | 40h | 40h |  |
| 130 | 4.2.2.7 | Bug fixes |  | 3d | 2010-08-16 A | 2010-08-18 A |  | 100% |  | Dan [66.7%] | 16h | 16h |  |
| 131 | 4.2.2.8 | Test Plan - JUnit test cases and updated documentation to QA |  | 2d | 2010-08-19 A | 2010-08-20 A | 137FF-3d | 100% | start no earlier than 2010-08-19 | Dan | 16h | 16h |  |
| 132 | 4.2.2.9 | Tab order issue |  | 1d | 2010-08-24 A | 2010-08-24 A |  | 100% | start no earlier than 2010-08-24 | Dan | 8h | 8h |  |
| 133 | 4.2.2.10 | caGrid integration - test SDK compatibility with caGrid 1.4 |  | 2d | 2010-08-25 A | 2010-08-26 A | 114 | 100% | start no earlier than 2010-08-25 | Dan | 16h | 16h |  |
| 134 | 4.2.2.11 | - not feasible - CQL 2.0 - attempt to reuse w/o caGrid 1.4 changes or conflicts | milestone | 0d | 2010-08-19 A | 2010-08-19 A |  | 100% | start no earlier than 2010-08-19 |  |  |  |  |
| 135 | 4.2.2.12 | - not feasible - CQL 2.0 - integration with SDK | milestone | 0d | 2010-08-19 A | 2010-08-19 A | 134 | 100% |  |  |  |  |  |
| 136 | 4.2.2.13 | Finalized design documents to QA | milestone | 0d | 2010-08-09 A | 2010-08-09 A |  | 100% | start no earlier than 2010-08-09 |  |  |  |  |
| 137 | 4.2.2.14 | Test Plan Due | milestone | 0d | 2010-08-13 A | 2010-08-13 A |  | 100% | start no earlier than 2010-08-13 |  |  |  |  |
| 138 | 4.2.2.15 | Sprint C2 Integration |  | 1d | 2010-08-27 A | 2010-08-27 A |  | 100% | start no earlier than 2010-08-27 | Santhosh; Dan | 16h | 16h |  |
| 139 | 4.2.3 | **C3 - Sprint 4 (QA)** |  | 19d | 2010-08-30 A | 2010-09-24 A |  | 100% | start no earlier than 2010-08-30 |  | 264h | 264h |  |
| 140 | 4.2.3.1 | Code base available for QA | milestone | 0d | 2010-08-30 A | 2010-08-30 A |  | 100% | start no earlier than 2010-06-23 |  |  |  |  |
| 141 | 4.2.3.2 | QA Support |  | 19d | 2010-08-30 A | 2010-09-24 A |  | 100% | start no earlier than 2010-06-15 | All [50%] | 76h | 76h | 1-6,8 |
| 142 | 4.2.3.3 | Additional system testing |  | 5d | 2010-08-30 A | 2010-09-03 A |  | 100% |  | Santhosh [50%] | 20h | 20h |  |
| 143 | 4.2.3.4 | Known issues from 4.3 - review |  | 0.5d | 2010-09-08 A | 2010-09-08 A | 209 | 100% | start no earlier than 2010-09-08 | Satish; Greg | 8h | 8h | 10 |
| 144 | 4.2.3.5 | WebSSO knowledge transfer |  | 2d | 2010-09-09 A | 2010-09-10 A |  | 100% | start no earlier than 2010-09-09 | Vijay; Santhosh | 32h | 32h |  |
| 145 | 4.2.3.6 | **Update documentation** |  | 6d | 2010-09-01 A | 2010-09-10 A |  | 100% |  |  | 32h | 32h |  |
| 146 | 4.2.3.6.1 | caCORE SDK 4.4 Release Notes (wiki) |  | 2d | 2010-09-01 A | 2010-09-02 A |  | 100% | start no earlier than 2010-09-01 | Santhosh | 16h | 16h | 2,8 |
| 147 | 4.2.3.6.2 | caCORE Workbench 0.2 Release Notes (wiki) |  | 2d | 2010-09-03 A | 2010-09-07 A |  | 100% | start no earlier than 2010-09-03 | Santhosh | 16h | 16h | 2,8 |
| 148 | 4.2.3.6.3 | SDK:Example/ISOExample readme (no changes) | milestone | 0d | 2010-09-09 A | 2010-09-09 A |  | 100% | start no earlier than 2010-09-09 |  |  |  | 1,2,8 |
| 149 | 4.2.3.6.4 | Workbench readme (no changes) | milestone | 0d | 2010-09-10 A | 2010-09-10 A |  | 100% | start no earlier than 2010-09-10 |  |  |  | 4,5 |

| ID | WBS | Task | Type | Duration | Start | Finish | Predecessors | Complete | Remaining | Total slack | Constraint | Resources | Work | Actual work | Text1 |
| --- | --- | --- | --- | --- | --- | --- | --- | --- | --- | --- | --- | --- | --- | --- | --- |
| 150 | 4.2.3.7 | **Update guides** |  | 18d | 2010-08-30 A | 2010-09-23 A |  | 100% |  |  |  |  | 88h | 88h |  |
| 151 | 4.2.3.7.1 | caCORE Workbench Version 0.2 Guide (wiki) |  | 3d | 2010-08-30 A | 2010-09-01 A |  | 100% |  |  | start no earlier than 2010-06-21 | Dan | 24h | 24h | 2,4,5,8 |
| 152 | 4.2.3.7.2 | **caCORE SDK Programmers Guide for 4.4 (wiki)** |  | 15d | 2010-09-02 A | 2010-09-23 A |  | 100% |  |  |  |  | 40h | 40h | 2,4,5,8 |
| 153 | 4.2.3.7.2.1 | General updates for 4.4 |  | 3d | 2010-09-02 A | 2010-09-07 A |  | 100% |  |  | start no earlier than 2010-09-02 | Dan | 24h | 24h | 2,4,5,8 |
| 154 | 4.2.3.7.2.2 | Modifying HBM files for ISO 21090 and the writable API |  | 1d | 2010-09-22 A | 2010-09-22 A |  | 100% |  |  | start no earlier than 2010-09-22 | Dan | 8h | 8h | 14 |
| 155 | 4.2.3.7.2.3 | Configuring query filters in db for security |  | 1d | 2010-09-23 A | 2010-09-23 A |  | 100% |  |  | start no earlier than 2010-09-23 | Dan | 8h | 8h | 13 |
| 156 | 4.2.3.7.3 | UML Modeling Guide (no changes) | milestone | 0d | 2010-09-08 A | 2010-09-08 A |  | 100% |  |  | start no earlier than 2010-09-08 |  |  |  | 2,4,5,8 |
| 157 | 4.2.3.7.4 | caCORE SDK Version 4.4 Object Relational Mapping (wiki) |  | 3d | 2010-09-08 A | 2010-09-10 A |  | 100% |  |  | start no earlier than 2010-09-08 | Dan | 24h | 24h | 2,4,5,8 |
| 158 | 4.2.3.7.5 | How To Use SDK Guide (no changes) | milestone | 0d | 2010-09-16 A | 2010-09-16 A |  | 100% |  |  | start no earlier than 2010-09-16 |  |  |  | 2,4,5,8 |
| 159 | 4.2.3.8 | Metada repository integration (MMS) -not applicable | milestone | 0d | 2010-09-16 A | 2010-09-16 A | 112 | 100% |  |  | start no earlier than 2010-09-16 |  |  |  | 11,12 |
| 160 | 4.2.3.9 | Final product documentation to QA | milestone | 0d | 2010-09-24 A | 2010-09-24 A |  | 100% |  |  | start no earlier than 2010-09-20 |  |  |  |  |
| 161 | 4.2.3.10 | Download Center updates |  | 1d | 2010-09-24 A | 2010-09-24 A |  | 100% |  |  | finish no earlier than 2010-09-24 | Dan | 8h | 8h | 1-6,8 |
| 162 | 4.3 | **Transition** |  | 36d | 2010-09-27 A | 2010-11-16 |  | 70% | 10.86d | 3d |  |  | 328h | 264h |  |
| 163 | 4.3.1 | QA support (QA delayed) |  | 5d | 2010-09-27 A | 2010-10-01 A |  | 100% |  |  | start no earlier than 2010-09-27 |  |  |  |  |
| 164 | 4.3.2 | Spreadsheet of license requirements |  | 1d | 2010-09-30 A | 2010-09-30 A |  | 100% |  |  | start no earlier than 2010-09-30 | Dan | 16h | 16h |  |
| 165 | 4.3.3 | **trackers from 1st round** |  | 4d | 2010-10-04 A | 2010-10-07 A | 164 | 100% |  |  |  |  | 32h | 32h |  |
| 166 | 4.3.3.1 | GF 29813, GF 29832, & GF 29833 |  | 1d | 2010-10-04 A | 2010-10-04 A |  | 100% |  |  |  | Dan | 8h | 8h |  |
| 167 | 4.3.3.2 | GF 29810 - Unable to search width attribute of the IVLTS datatype |  | 2d | 2010-10-05 A | 2010-10-06 A | 163 | 100% |  |  | start no earlier than 2010-10-05 | Dan | 16h | 16h |  |
| 168 | 4.3.3.3 | GF 29782 - Inconsistent QBE search interface between AD and EN |  | 1d | 2010-10-07 A | 2010-10-07 A | 163, 167 | 100% |  |  | start no earlier than 2010-10-07 | Dan | 8h | 8h |  |
| 169 | 4.3.4 | tag without writable API fix, ivy update, testing |  | 1d | 2010-10-08 A | 2010-10-08 A | 166, 168, 167 | 100% |  |  |  | Dan | 8h | 8h |  |
| 170 | 4.3.5 | GF 29818 - Unable to insert data once performing query through web interface |  | 1d | 2010-10-12 A | 2010-10-12 A | 163 | 100% |  |  | start no earlier than 2010-10-12 | Vijay; Dan | 8h | 8h |  |
| 171 | 4.3.6 | test (dev) |  | 2d | 2010-10-12 A | 2010-10-13 A | 169 | 100% |  |  |  | John [50%]; Dan [50%] | 16h | 16h |  |
| 172 | 4.3.7 | (QA) |  | 2d | 2010-10-14 A | 2010-10-15 A | 171 | 100% |  |  |  |  |  |  |  |
| 173 | 4.3.8 | "umbrella design doc": SDKDesignDocument-DeveloperSupport.doc |  | 3d | 2010-10-14 A | 2010-10-18 A |  | 100% |  |  | start no earlier than 2010-10-14 | Bediako | 24h | 24h |  |
| 174 | 4.3.9 | Deliverables checklist |  | 1d | 2010-10-18 A | 2010-10-18 A |  | 100% |  |  | start no earlier than 2010-10-18 | Greg | 8h | 8h |  |
| 175 | 4.3.10 | Deployment checklist |  | 1d | 2010-10-19 A | 2010-10-19 A |  | 100% |  |  | start no earlier than 2010-10-19 | Greg | 8h | 8h |  |
| 176 | 4.3.11 | Improve build documentation |  | 3d | 2010-10-19 A | 2010-10-21 A |  | 100% |  |  | start no earlier than 2010-10-19 | Bediako | 24h | 24h |  |

| ID | WBS | Task | Type | Duration | Start | Finish | Predecessors | Complete | Remaining | Total slack | Free slack | Constraint | Resources | Work | Actual work | Text1 |
| --- | --- | --- | --- | --- | --- | --- | --- | --- | --- | --- | --- | --- | --- | --- | --- | --- |
| 177 | 4.3.12 | **trackers from 2nd round** |  | 6d | 2010-10-18 A | 2010-10-25 A |  | 100% |  |  |  |  |  | 80h | 80h |  |
| 178 | 4.3.12.1 | GF 29808 - Search AD datatype returns incorrect ADXP parts |  | 4d | 2010-10-18 A | 2010-10-21 A | 172 | 100% |  |  |  |  | Vijay | 32h | 32h |  |
| 179 | 4.3.12.2 | GF 29809 - Incorrect QBE search for EN datatype |  | 3d | 2010-10-18 A | 2010-10-20 A | 172 | 100% |  |  |  |  | Dan | 24h | 24h |  |
| 180 | 4.3.12.3 | GF 29764 - AD, EN, ENON, ENPN ISO Data Types Require… |  | 1d | 2010-10-21 A | 2010-10-21 A | 172 | 100% |  |  |  | start no earlier than 2010-10-21 | Dan | 8h | 8h |  |
| 181 | 4.3.12.4 | GF 29927 - Incorrect RESTFul search for AD datatype |  | 1d | 2010-10-22 A | 2010-10-22 A | 172 | 100% |  |  |  | start no earlier than 2010-10-22 | Dan | 8h | 8h |  |
| 182 | 4.3.12.5 | test |  | 1d | 2010-10-25 A | 2010-10-25 A | 180, 178, 179, 181 | 100% |  |  |  |  | Dan; John | 8h | 8h |  |
| 183 | 4.3.13 | QA |  | 5d | 2010-10-26 A | 2010-11-01 A | 177 | 100% |  |  |  |  |  |  |  |  |
| 184 | 4.3.14 | **trackers from 3rd round** |  | 5d | 2010-10-29 A | 2010-11-04 A |  | 100% |  |  |  |  |  | 40h | 40h |  |
| 185 | 4.3.14.1 | GF 30007 - Browse EnDataType in Domain Class Browser Web Page for quering value4 generates exceptions |  | 1d | 2010-10-29 A | 2010-10-29 A | 183FS-2d | 100% |  |  |  |  | Dan | 8h | 8h |  |
| 186 | 4.3.14.2 | GF 30008 - Browse DsetAdDataType in Domain Class Browser Web Page for quering value8 generates exceptions |  | 1d | 2010-11-01 A | 2010-11-01 A | 183FS-2d | 100% |  |  |  | start no earlier than 2010-11-01 | Dan | 8h | 8h |  |
| 187 | 4.3.14.3 | workbench QA deployment issue (no tracker) |  | 1d | 2010-11-02 A | 2010-11-02 A |  | 100% |  |  |  | start no earlier than 2010-11-02 | Dan | 8h | 8h |  |
| 188 | 4.3.14.4 | resolve GF 29809 (no code changes) |  | 1d | 2010-11-03 A | 2010-11-03 A | 183 | 100% |  |  |  | start no earlier than 2010-11-03 | Dan | 8h | 8h |  |
| 189 | 4.3.14.5 | test & retag |  | 1d | 2010-11-04 A | 2010-11-04 A |  | 100% |  |  |  | start no earlier than 2010-11-04 | Dan | 8h | 8h |  |
| 190 | 4.3.15 | QA |  | 3d | 2010-11-05 | 2010-11-09 | 184 |  |  | 3d | 0d |  |  |  |  |  |
| 191 | 4.3.16 | QA Complete | milestone | 0d | 2010-11-09 | 2010-11-09 | 190 |  |  | 3d | 0d | start no earlier than 2010-09-24 |  |  |  |  |
| 192 | 4.3.17 | Deploy WB to stage |  | 2d | 2010-11-10 | 2010-11-11 | 191 |  |  | 3d | 0d |  | external | 16h |  |  |
| 193 | 4.3.18 | Deploy WB to production |  | 2d | 2010-11-12 | 2010-11-15 | 192 |  |  | 3d | 0d |  | external | 16h |  |  |
| 194 | 4.3.19 | Other deployment (see checklist) |  | 4d | 2010-11-10 | 2010-11-15 | 191 |  |  | 3d | 0d |  | external | 32h |  |  |
| 195 | 4.3.20 | SDK 4.4 Release Announcement |  | 1d | 2010-11-16 | 2010-11-16 | 194, 193 |  |  | 3d |  | start no earlier than 2010-10-05 |  |  |  |  |
| 196 | 4.3.21 | Deliverables Acceptance - documentation, code, QA |  | 4d | 2010-11-05 | 2010-11-10 | 191FF+1d, 174 |  |  | 6d | 0d | start no earlier than 2010-09-27 |  |  |  |  |
| 197 | 4.3.22 | (Test Package) |  | 1d | 2010-11-10 | 2010-11-10 | 191 |  |  | 7d |  | start no earlier than 2010-10-04 |  |  |  |  |
| 198 | 4.3.23 | Software Code Base (4.4) |  | 1d | 2010-11-11 | 2010-11-11 | 196 |  |  | 6d |  | start no earlier than 2010-06-15 |  |  |  |  |
| 199 | 4.3.24 | Deployment Package (4.4) |  | 1d | 2010-11-11 | 2010-11-11 | 196 |  |  | 6d |  | start no earlier than 2010-06-15 |  |  |  |  |
| 201 | 5 | **Usability enhancements prototype** |  | 80d | 2010-06-21 A | 2010-10-13 |  | 96% | 2.87d | 27d |  |  |  | 1688.57h | 1632.57h | 8,9 |
| 202 | 5.1 | **Elaboration** |  | 10d | 2010-06-21 A | 2010-07-02 A |  | 100% |  |  |  |  |  | 280h | 280h |  |
| 203 | 5.1.1 | **E1 - Sprint 1** |  | 10d | 2010-06-21 A | 2010-07-02 A |  | 100% |  |  |  |  |  | 280h | 280h |  |
| 204 | 5.1.1.1 | Top-down analysis paper - research and rough cut |  | 10d | 2010-06-21 A | 2010-07-02 A |  | 100% |  |  |  | start no earlier than 2010-06-21 | Satish [25%]; Prasad | 100h | 100h |  |
| 205 | 5.1.1.2 | Bottom-up analysis paper - research and rough cut |  | 10d | 2010-06-21 A | 2010-07-02 A |  | 100% |  |  |  | start no earlier than 2010-06-21 | Bediako; Satish [25%] | 100h | 100h |  |
| 206 | 5.1.1.3 | Eclipse service creation wizard research |  | 10d | 2010-06-21 A | 2010-07-02 A |  | 100% |  |  |  | start no earlier than 2010-06-21 | John | 80h | 80h |  |

| ID | WBS | Task | Type | Duration | Start | Finish | Predecessors | Complete | Remaining | Total slack | Constraint | Resources | Work | Actual work |
| --- | --- | --- | --- | --- | --- | --- | --- | --- | --- | --- | --- | --- | --- | --- |
| 207 | 5.2 | **Construction** |  | 58d | 2010-07-06 A | 2010-09-24 |  | 95% | 2.9d | 39d |  |  | 1216h | 1160h |
| 208 | 5.2.1 | **C1- Sprint 2** |  | 19d | 2010-07-06 A | 2010-07-30 |  | 89% | 2.05d | 78d | start no earlier than 2010-07-06 |  | 520h | 464h |
| 209 | 5.2.1.1 | **Top-down analysis paper** |  | 19d | 2010-07-06 A | 2010-07-30 | 204 | 84% | 3d | 78d |  |  | 152h | 128h |
| 210 | 5.2.1.1.1 | Updates, reviews and refinements |  | 16d | 2010-07-06 A | 2010-07-27 A |  | 100% |  |  |  | Prasad | 128h | 128h |
| 211 | 5.2.1.1.2 | Next Generation caCORE Infrastructure (document) | milestone | 0d | 2010-07-27 A | 2010-07-27 A | 210 | 100% |  |  |  | Prasad |  |  |
| 212 | 5.2.1.1.3 | caCORE Infrastructure - Next Generation Tooling (presentation) | milestone | 0d | 2010-07-27 A | 2010-07-27 A | 210 | 100% |  |  |  | Prasad |  |  |
| 213 | 5.2.1.1.4 | Design document |  | 3d | 2010-07-28 | 2010-07-30 | 210 |  |  | 78d | start no earlier than 2010-07-22 | Prasad | 24h |  |
| 214 | 5.2.1.2 | **Bottom-up analysis paper** |  | 19d | 2010-07-06 A | 2010-07-30 A | 205 | 100% |  |  |  |  | 152h | 152h |
| 215 | 5.2.1.2.1 | Updates, reviews and refinements |  | 14d | 2010-07-06 A | 2010-07-23 A |  | 100% |  |  |  | Bediako | 112h | 112h |
| 216 | 5.2.1.2.2 | Next Generation SDK (document) | milestone | 0d | 2010-07-23 A | 2010-07-23 A | 215 | 100% |  |  | start no earlier than 2010-07-21 | Bediako |  |  |
| 217 | 5.2.1.2.3 | Future SDK - Technical Treatment (presentation) | milestone | 0d | 2010-07-23 A | 2010-07-23 A | 215 | 100% |  |  | start no earlier than 2010-07-21 | Bediako |  |  |
| 218 | 5.2.1.2.4 | Design document |  | 5d | 2010-07-26 A | 2010-07-30 A | 215 | 100% |  |  | start no earlier than 2010-07-22 | Bediako | 40h | 40h |
| 219 | 5.2.1.3 | **Develop enhancement/protoype plan** |  | 8d | 2010-07-21 A | 2010-07-30 |  | 50% | 4d | 78d |  |  | 64h | 32h |
| 220 | 5.2.1.3.1 | Develop work plan for enhancements |  | 4d | 2010-07-21 A | 2010-07-26 A |  | 100% |  |  | start no earlier than 2010-07-21 | Satish | 32h | 32h |
| 221 | 5.2.1.3.2 | Create workflows |  | 4d | 2010-07-27 | 2010-07-30 | 220 |  |  | 78d | start no earlier than 2010-07-21 | Satish | 32h |  |
| 222 | 5.2.1.4 | **Eclipse integration** |  | 19d | 2010-07-06 A | 2010-07-30 A |  | 100% |  |  |  |  | 152h | 152h |
| 223 | 5.2.1.4.1 | Initial research |  | 2d | 2010-07-06 A | 2010-07-07 A | 206 | 100% |  |  | start no earlier than 2010-06-21 | John | 16h | 16h |
| 224 | 5.2.1.4.2 | Project creation wizard - simplistic multi-page with progress |  | 5d | 2010-07-08 A | 2010-07-14 A | 223 | 100% |  |  |  | John | 40h | 40h |
| 225 | 5.2.1.4.3 | Project creation wizard - listeners, button start, minor additions |  | 2d | 2010-07-15 A | 2010-07-16 A | 224 | 100% |  |  |  | John | 16h | 16h |
| 226 | 5.2.1.4.4 | Eclipse EMF research |  | 5d | 2010-07-19 A | 2010-07-23 A |  | 100% |  |  | start no earlier than 2010-07-19 | John | 40h | 40h |
| 227 | 5.2.1.4.5 | Convert EMF models to EA |  | 5d | 2010-07-26 A | 2010-07-30 A | 226 | 100% |  |  |  | John | 40h | 40h |
| 228 | 5.2.2 | **C2 - Sprint 3** |  | 20d | 2010-08-02 A | 2010-08-27 A |  | 100% |  |  | start no earlier than 2010-08-02 |  | 448h | 448h |
| 229 | 5.2.2.1 | **Design** |  | 15d | 2010-08-02 A | 2010-08-20 A |  | 100% |  |  |  |  | 264h | 264h |
| 230 | 5.2.2.1.1 | SDKGeneratorDesign.pdf |  | 5d | 2010-08-02 A | 2010-08-06 A |  | 100% |  |  |  | Bediako | 40h | 40h |
| 231 | 5.2.2.1.2 | ServiceGenerationFramework_SRS.doc |  | 2d | 2010-08-02 A | 2010-08-03 A |  | 100% |  |  |  | Prasad [50%] | 8h | 8h |
| 232 | 5.2.2.1.3 | Next Generation Service Development Framework.docx |  | 3d | 2010-08-04 A | 2010-08-06 A | 231 | 100% |  |  |  | Prasad | 24h | 24h |
| 233 | 5.2.2.1.4 | Eclipse-EA integration testing |  | 5d | 2010-08-02 A | 2010-08-06 A | 232 | 100% |  |  |  | John | 40h | 40h |
| 234 | 5.2.2.1.5 | Detailed design of Eclipse Application, Model Explorer, and Generator Manager |  | 5d | 2010-08-09 A | 2010-08-13 A | 230, 233 | 100% |  |  |  | Bediako; Prasad; John | 120h | 120h |
| 235 | 5.2.2.1.6 | SDKEclipsePluginDesign.pdf |  | 4d | 2010-08-17 A | 2010-08-20 A | 234, 241 | 100% |  |  |  | Bediako | 32h | 32h |
| 236 | 5.2.2.2 | Sub-project setup: repository, tasking, etc. | milestone | 0d | 2010-08-20 A | 2010-08-20 A |  | 100% |  |  | start no earlier than 2010-08-20 | Bediako |  |  |

| ID | WBS | Task | Duration | Start | Finish | Predecessors | Complete | Constraint | Resources | Work | Actual work |
| --- | --- | --- | --- | --- | --- | --- | --- | --- | --- | --- | --- |
| 237 | 5.2.2.3 | **Model Explorer and Translators** | 9d | 2010-08-16 A | 2010-08-26 A |  | 100% |  |  | 80h | 80h |
| 238 | 5.2.2.3.1 | - abandoned - Build Ecore to EA (XMI) translator | 3d | 2010-08-16 A | 2010-08-18 A | 234 | 100% | start no earlier than 2010-08-13 | John | 24h | 24h |
| 239 | 5.2.2.3.2 | Build EA (XMI) to Ecore translator | 7d | 2010-08-18 A | 2010-08-26 A | 234 | 100% | start no earlier than 2010-08-18 | John | 56h | 56h |
| 240 | 5.2.2.4 | **Generator** | 9d | 2010-08-16 A | 2010-08-26 A |  | 100% |  |  | 88h | 88h |
| 241 | 5.2.2.4.1 | Design SDK Generator | 1d | 2010-08-16 A | 2010-08-16 A |  | 100% |  | Bediako | 8h | 8h |
| 242 | 5.2.2.4.2 | **Build SDK Generator Framework** | 4d | 2010-08-23 A | 2010-08-26 A |  | 100% |  |  | 32h | 32h |
| 243 | 5.2.2.4.2.1 | Build script executor | 2d | 2010-08-23 A | 2010-08-24 A | 241 | 100% | start no earlier than 2010-08-23 | Bediako | 16h | 16h |
| 244 | 5.2.2.4.2.2 | Build script context | 2d | 2010-08-25 A | 2010-08-26 A | 241 | 100% | start no earlier than 2010-08-25 | Bediako | 16h | 16h |
| 245 | 5.2.2.4.3 | **Sample/Reference Implementation** | 6d | 2010-08-17 A | 2010-08-24 A |  | 100% |  |  | 48h | 48h |
| 246 | 5.2.2.4.3.1 | Design Sample/Reference Implementation | 2d | 2010-08-17 A | 2010-08-18 A | 241 | 100% |  | Prasad | 16h | 16h |
| 247 | 5.2.2.4.3.2 | Create service implementation templates | 1d | 2010-08-19 A | 2010-08-19 A | 246 | 100% |  | Prasad | 8h | 8h |
| 248 | 5.2.2.4.3.3 | Create service interface templates | 1d | 2010-08-20 A | 2010-08-20 A | 246 | 100% | start no earlier than 2010-08-20 | Prasad | 8h | 8h |
| 249 | 5.2.2.4.3.4 | Create Pojo Generator | 1d | 2010-08-23 A | 2010-08-23 A | 246 | 100% | start no earlier than 2010-08-23 | Prasad | 8h | 8h |
| 250 | 5.2.2.4.3.5 | Create Deployment/Build Scripts | 1d | 2010-08-24 A | 2010-08-24 A | 246 | 100% | start no earlier than 2010-08-24 | Prasad | 8h | 8h |
| 251 | 5.2.2.5 | Sprint integration | 1d | 2010-08-27 A | 2010-08-27 A | 237, 240 | 100% |  | Bediako; John | 16h | 16h |
| 252 | 5.2.3 | **C3 - Sprint 4** | 19d | 2010-08-30 A | 2010-09-24 A |  | 100% | start no earlier than 2010-08-30 |  | 248h | 248h |
| 253 | 5.2.3.1 | **Model Explorer and Translators** | 19d | 2010-08-30 A | 2010-09-24 A |  | 100% |  |  | 152h | 152h |
| 254 | 5.2.3.1.1 | Core Model Explorer Design | 4d | 2010-08-30 A | 2010-09-02 A | 234 | 100% |  | John | 32h | 32h |
| 255 | 5.2.3.1.2 | Build Meaning Model Explorer - main screen | 5d | 2010-09-03 A | 2010-09-10 A | 254 | 100% |  | John | 40h | 40h |
| 256 | 5.2.3.1.3 | Meaning Model - properties, operations, relationships | 5d | 2010-09-20 A | 2010-09-24 A | 255 | 100% | start no earlier than 2010-09-20 | Bediako | 40h | 40h |
| 257 | 5.2.3.1.4 | Generator Manager Screen | 5d | 2010-09-20 A | 2010-09-24 A | 254 | 100% | start no earlier than 2010-09-20 | John | 40h | 40h |
| 258 | 5.2.3.2 | **Generator** | 4d | 2010-08-30 A | 2010-09-02 A |  | 100% |  |  | 32h | 32h |
| 259 | 5.2.3.2.1 | **Build SDK Generator Framework** | 4d | 2010-08-30 A | 2010-09-02 A |  | 100% |  |  | 32h | 32h |
| 260 | 5.2.3.2.1.1 | Build generator workflow logic | 2d | 2010-08-30 A | 2010-08-31 A | 241 | 100% | start no earlier than 2010-08-30 | Bediako | 16h | 16h |
| 261 | 5.2.3.2.1.2 | Build core generator | 2d | 2010-09-01 A | 2010-09-02 A | 241 | 100% | start no earlier than 2010-09-01 | Bediako | 16h | 16h |

| ID | WBS | Task | Type | Duration | Start | Finish | Predecessors | Complete | Total slack | Constraint | Resources | Work | Actual work | Text1 |
| --- | --- | --- | --- | --- | --- | --- | --- | --- | --- | --- | --- | --- | --- | --- |
| 262 | 5.2.3.3 | **Infrastructure** |  | 10d | 2010-09-03 A | 2010-09-17 A |  | 100% |  |  |  | 64h | 64h |  |
| 263 | 5.2.3.3.1 | Logging |  | 1d | 2010-09-03 A | 2010-09-03 A |  | 100% |  | start no earlier than 2010-09-03 | Bediako | 8h | 8h |  |
| 264 | 5.2.3.3.2 | Package handling utilities |  | 1d | 2010-09-07 A | 2010-09-07 A |  | 100% |  | start no earlier than 2010-09-06 | Bediako | 8h | 8h |  |
| 265 | 5.2.3.3.3 | Study Eclipse IDE and existing UI code |  | 2d | 2010-09-08 A | 2010-09-09 A |  | 100% |  | start no earlier than 2010-09-08 | Bediako | 16h | 16h |  |
| 266 | 5.2.3.3.4 | Integration |  | 2d | 2010-09-16 A | 2010-09-17 A |  | 100% |  | start no earlier than 2010-09-16 | Bediako; John | 32h | 32h |  |
| 267 | 5.3 | **Transition** |  | 12d | 2010-09-27 A | 2010-10-13 A |  | 100% |  | start no earlier than 2010-09-27 |  | 192.57h | 192.57h |  |
| 268 | 5.3.1 | Model Converter Screen |  | 2d | 2010-09-27 A | 2010-09-28 A |  | 100% |  |  | Bediako; John | 32h | 32h |  |
| 269 | 5.3.2 | Test, debug, and demo preparation |  | 3d | 2010-09-29 A | 2010-10-01 A |  | 100% |  | start no earlier than 2010-09-29 | Bediako; John | 48h | 48h |  |
| 270 | 5.3.3 | Refactor and extend requirements and design documentation |  | 5d | 2010-09-27 A | 2010-10-01 A |  | 100% |  |  | Satish | 40h | 40h |  |
| 271 | 5.3.4 | Demo |  | 1d | 2010-10-04 A | 2010-10-04 A |  | 100% |  | start no earlier than 2010-10-04 |  |  |  |  |
| 272 | 5.3.5 | **Usability enhancements prototype deliverables** |  | 7d | 2010-10-01 A | 2010-10-13 A | 269, 270 | 100% |  |  |  | 72.57h | 72.57h |  |
| 273 | 5.3.5.1 | Prototype code | milestone | 0d | 2010-10-04 A | 2010-10-04 A | 271 | 100% |  |  |  |  |  |  |
| 274 | 5.3.5.2 | **Hydra - Design.docx** |  | 4d | 2010-10-01 A | 2010-10-07 A |  | 100% |  |  |  | 4.57h | 4.57h |  |
| 275 | 5.3.5.2.1 | Overview: diagrams, technologies, features, desired features | milestone | 0d | 2010-10-01 A | 2010-10-01 A | 270 | 100% |  |  |  |  |  |  |
| 276 | 5.3.5.2.2 | Requirements and uses cases considered | milestone | 0d | 2010-10-01 A | 2010-10-01 A | 270 | 100% |  |  |  |  |  |  |
| 277 | 5.3.5.2.3 | Design document | milestone | 0d | 2010-10-01 A | 2010-10-01 A | 270 | 100% |  |  |  |  |  |  |
| 278 | 5.3.5.2.4 | Internal reviews |  | 4d | 2010-10-04 A | 2010-10-07 A |  | 100% |  |  | Bediako | 4.57h | 4.57h |  |
| 279 | 5.3.5.3 | **Hydra Development Guide.docx** |  | 7d | 2010-10-04 A | 2010-10-13 A |  | 100% |  |  |  | 68h | 68h |  |
| 280 | 5.3.5.3.1 | Developer's guide |  | 2d | 2010-10-04 A | 2010-10-05 A |  | 100% |  | start no earlier than 2010-10-04 | John | 16h | 16h |  |
| 281 | 5.3.5.3.2 | UML for prototype implementation |  | 2d | 2010-10-06 A | 2010-10-07 A | 269 | 100% |  | start no earlier than 2010-10-06 | John | 16h | 16h |  |
| 282 | 5.3.5.3.3 | Test cases, if any |  | 1d | 2010-10-08 A | 2010-10-08 A | 269 | 100% |  | start no earlier than 2010-10-08 | Bediako | 8h | 8h |  |
| 283 | 5.3.5.3.4 | Internal reviews and "test" |  | 2d | 2010-10-08 A | 2010-10-12 A | 280FS-1d, 281FS-1d, 282FS-1d | 100% |  |  | Greg | 16h | 16h |  |
| 284 | 5.3.5.3.5 | Updates due to testing |  | 3d | 2010-10-08 A | 2010-10-13 A | 283SS | 100% |  |  | John [50%] | 12h | 12h |  |
| 286 | 6 | User support - ongoing |  | 93d | 2010-05-28 | 2010-10-08 |  |  | 29d | start no earlier than 2010-05-28 | All [25%] | 186h |  | 1,10 |
| 287 | 7 | Training development support |  | 10d? | 2010-08-16 | 2010-08-27 |  |  | 58d | start no earlier than 2010-08-16 | Satish | 80h |  | 10 |
| 288 | 8 | caGrid 1.4 integration testing post-caGrid release (?) |  | 5d? | 2010-10-12 | 2010-10-18 |  |  | 24d | start no earlier than 2010-10-11 |  |  |  |  |

| ID | WBS | Task | Type | Duration | Start | Finish | Complete | Total slack | Constraint | Resources | Work | Actual work |
| --- | --- | --- | --- | --- | --- | --- | --- | --- | --- | --- | --- | --- |
| 290 | 9 | **Major events affecting availability** |  | 75d | 2010-06-01 A | 2010-09-15 A | 100% |  |  |  | 272h | 272h |
| 291 | 9.1 | VCDE-Architecture Face To Face & Prep |  | 4d | 2010-06-01 A | 2010-06-04 A | 100% |  | start no earlier than 2010-06-01 | Bediako; Satish; Prasad; Vijay | 128h | 128h |
| 292 | 9.2 | caBIG Annual Meeting prep |  | 3d | 2010-09-07 A | 2010-09-09 A | 100% |  | start no earlier than 2010-09-07 |  |  |  |
| 293 | 9.3 | caBIG Annual Meeting dummy |  | 3d | 2010-09-13 A | 2010-09-15 A | 100% |  | start no earlier than 2010-09-13 | Bediako; Satish; Vijay; John; Greg; Dan | 144h | 144h |
| 295 | 10 | **Vacation** |  | 29d | 2010-07-20 A | 2010-08-27 A | 100% |  |  |  | 80h | 80h |
| 296 | 10.1 | Greg |  | 1d | 2010-07-20 A | 2010-07-20 A | 100% |  | start no earlier than 2010-07-20 |  |  |  |
| 297 | 10.2 | Greg |  | 5d | 2010-08-09 A | 2010-08-13 A | 100% |  | start no earlier than 2010-08-09 |  |  |  |
| 298 | 10.3 | Vijay |  | 10d | 2010-08-16 A | 2010-08-27 A | 100% |  | must start on 2010-08-16 | Vijay | 80h | 80h |
| 300 | 11 | Contract deliverables are in blue | milestone | 0d | 2010-05-20 | 2010-05-20 |  | 128d |  |  |  |  |
| 301 | 12 | Non-contract deliverables are in maroon | milestone | 0d | 2010-07-13 | 2010-07-13 |  | 92d | start no earlier than 2010-07-13 |  |  |  |
| 302 | 13 | Key dates/tasks for interactions with external teams are in green | milestone | 0d | 2010-06-23 | 2010-06-23 |  | 105d | start no earlier than 2010-06-23 |  |  |  |
| 305 | 14 | **Reference to objectives** |  | 1d? | 2010-05-20 | 2010-05-20 |  | 127d |  |  |  |  |
| 306 | 14.1 | 1) Maintenance of and technical support for the ISO 21090 Java Library |  | 1d? | 2010-05-20 | 2010-05-20 |  | 127d | start no earlier than 2010-05-20 |  |  |  |
| 307 | 14.2 | 2) caCORE SDK support for new data types |  | 1d? | 2010-05-20 | 2010-05-20 |  | 127d | start no earlier than 2010-05-20 |  |  |  |
| 308 | 14.3 | 3) Provide querying of new data types via Java API, remote API, RESTful API, and caGrid service |  | 1d? | 2010-05-20 | 2010-05-20 |  | 127d | start no earlier than 2010-05-20 |  |  |  |
| 309 | 14.4 | 4) Provide a solution for the SDK web interface to support query building for ISO 21090 data types. Enhance the QBE translator and integrate with the CQL query translator to support new data types. |  | 1d? | 2010-05-20 | 2010-05-20 |  | 127d | start no earlier than 2010-05-20 |  |  |  |
| 310 | 14.5 | 5) Provide an easy user interface for users to navigate the domain model browser. From the domain model browser, users should be able to query the system using the query builder. |  | 1d? | 2010-05-20 | 2010-05-20 |  | 127d | start no earlier than 2010-05-20 |  |  |  |
| 311 | 14.6 | 6) Support caGrid and Introduce with regard to CQL changes and data types used by COPPA/PODS |  | 1d? | 2010-05-20 | 2010-05-20 |  | 127d | start no earlier than 2010-05-20 |  |  |  |
| 312 | 14.7 | 7) Extension of the ISO 21090 library to support operations on data types |  | 1d? | 2010-05-20 | 2010-05-20 |  | 127d | start no earlier than 2010-05-20 |  |  |  |
| 313 | 14.8 | 8) Maintain, enhance, and/or extend the existing tools to support rapid development of services that are compatible with the caBIG infrastructure and allow services to support data sharing securely and efficiently |  | 1d? | 2010-05-20 | 2010-05-20 |  | 127d | start no earlier than 2010-05-20 |  |  |  |
| 314 | 14.9 | 9) Evaluate existing tools for their ability to support service development in BIG HEAS, enhance existing tools, and develop new tools to support the emerging business needs |  | 1d? | 2010-05-20 | 2010-05-20 |  | 127d | start no earlier than 2010-05-20 |  |  |  |
| 315 | 14.10 | 10) Full life cycle operational and user support of SDK, CSM, and CLM |  | 1d? | 2010-05-20 | 2010-05-20 |  | 127d | start no earlier than 2010-05-20 |  |  |  |
| 316 | 14.11 | 11) Enhance caGrid’s Metadata Model Service (MMS) to read the metadata from the target semantic infrastructure... |  | 1d? | 2010-05-20 | 2010-05-20 |  | 127d | start no earlier than 2010-05-20 |  |  |  |
| 317 | 14.12 | 12) Enhance Data Service infrastructure to support new MMS |  | 1d? | 2010-05-20 | 2010-05-20 |  | 127d | start no earlier than 2010-05-20 |  |  |  |
| 318 | 14.13 | 13) Enhanced instance-level and attribute-level security and enhanced security in the runtime system |  | 1d? | 2010-05-20 | 2010-05-20 |  | 127d | start no earlier than 2010-05-20 |  |  |  |
| 319 | 14.14 | 14) Develop or enhance the writable API functions to support persistence through the ISO 21090 data types |  | 1d? | 2010-05-20 | 2010-05-20 |  | 127d |  |  |  |  |
